# График работ

Schedule from MS Project XML, 2001-09-03 to 2003-07-28, status date 1998-04-15, 10 hours a day.
Иркутскгипродорнии

## Calendars

- Standard: Mon-Fri 08:00-12:00, 13:00-17:00; Sat-Sun off.

## Resources

| Resource |
| --- |
| 10 |
| 10 человек |
| 5 человек |
| 6 человек |
| 15 человек |
| 8 человек |
| 4 человека |
| 10 чел. |
| 5 чел. |
| 8 чел. |
| 15 чел. |
| 6 чел. |
| 4 чел. |
| 3 человека 15 человек |
| 5 человека 15 человек |

## Schedule

| ID | WBS | Task | Duration | Start | Finish | Predecessors | Baseline start | Baseline finish | Baseline duration | Total slack | Free slack | Constraint | Resources | Work | Текст1 | Число1 |
| --- | --- | --- | --- | --- | --- | --- | --- | --- | --- | --- | --- | --- | --- | --- | --- | --- |
| 1 | 5 | **I. Подготовительные работы** | 32d | 2001-09-03 | 2001-10-26 |  | 2000-02-07 | 2000-03-24 | 28d | 0d |  |  |  | 300h | - |  |
| 2 | 1.1 | 1.1.Освоение строительной площадки | 25d | 2001-09-13 | 2001-10-26 | 3FS+2d | 1998-04-06 | 1998-04-10 | 4d | 0.4d | 0d | start no earlier than 2001-09-03 | 10 чел. | 250h | м2 | 4300 |
| 3 | 1.2 | 1.2.Устройство подъездных дорог | 5d | 2001-09-03 | 2001-09-11 |  | 1999-10-04 | 1999-11-05 | 20d | 0d |  | start no earlier than 2001-09-03 | 5 чел. | 50h | м3 | 2580 |
| 4 | 2 | **II. Опоры** | 117d | 2001-10-25 | 2002-05-17 |  | 1998-03-30 | 1998-04-03 | 4d | 0.4d |  |  |  | 1540h | - |  |
| 5 | 2.1 | 2.1.Устройство площадок | 12d | 2001-10-25 | 2001-11-14 | 2FS-1.6d | 1998-05-04 | 1998-05-11 | 4.8d | 0.4d | 0d | start no earlier than 2000-02-08 | 5 чел. | 120h | м3 | 362 |
| 6 | 2.2 | **2.2.Разработка котлованов** | 42d | 2001-11-02 | 2002-01-15 |  | 2000-07-20 | 2000-07-20 | 19.2d | 0.4d |  |  |  | 420h | - |  |
| 7 | 2.2.1 | 2.2.1 Опора №1 | 8d | 2001-11-02 | 2001-11-16 | 5SS+5d | 1999-11-05 | 2000-02-04 | 52.8d | 0.4d | 0d | start no earlier than 1999-01-25 | 5 чел. | 80h | м3 | 195 |
| 8 | 2.2.2 | 2.2.1 Опора №2 | 14d | 2001-11-16 | 2001-12-11 | 7 |  |  |  | 0.4d | 0d |  | 5 чел. | 140h | м3 | 192 |
| 9 | 2.2.3 | 2.2.2 Опора №3 | 12d | 2001-12-11 | 2002-01-01 | 8 |  |  |  | 0.4d | 0d |  | 10 чел. | 120h | м3 | 175 |
| 10 | 2.2.4 | 2.2.3 Опора №4 | 8d | 2002-01-01 | 2002-01-15 | 9 | 1998-03-30 | 1998-04-03 | 4d | 0.4d | 0d |  | 5 чел. | 80h | м3 | 525 |
| 11 | 2 | **2.3. Бетонирование ростверка** | 44d | 2001-11-16 | 2002-02-01 | 7 | 2000-04-12 | 2000-04-18 | 4d | 34.4d |  |  |  | 400h | - |  |
| 12 | 2.3.1 | 2.3.1 Опора №1 | 10d | 2001-11-16 | 2001-12-04 | 7 |  |  |  | 343.4d |  |  | 5 чел. | 100h | м3 | 59.3 |
| 13 | 2.3.2 | 2.3.2 Опора №2 | 10d | 2001-12-11 | 2001-12-28 | 8 |  |  |  | 329.4d |  |  | 5 чел. | 100h | м3 | 49.5 |
| 14 | 2.3.3 | 2.3.3 Опора №3 | 10d | 2002-01-01 | 2002-01-18 | 9 |  |  |  | 317.4d |  |  | 5 чел. | 100h | м3 | 49.5 |
| 15 | 2.3.4 | 2.3.4 Опора №4 | 10d | 2002-01-15 | 2002-02-01 | 10 |  |  |  | 0.4d | 0d | start no earlier than 2001-01-16 | 5 чел. | 100h | м3 | 59.3 |
| 16 | 2.4 | **2.4.Сооружение опоры** | 60d | 2002-02-01 | 2002-05-17 | 15 |  |  |  | 0.4d |  |  |  | 600h |  | 2 |
| 17 | 2.4.1 | 2.4.1 Опора №1 | 12d | 2002-02-01 | 2002-02-22 | 15 |  |  |  | 0.4d | 0d |  | 10 чел. | 120h | м3 | 9.95 |
| 18 | 2.4.2 | 2.4.2 Опора №2 | 18d | 2002-02-22 | 2002-03-26 | 17 |  |  |  | 0.4d | 0d |  | 5 чел. | 180h | м3 | 61.5 |
| 19 | 2.4.3 | 2.4.3 Опора №3 | 18d | 2002-03-26 | 2002-04-26 | 18 |  |  |  | 0.4d | 0d |  | 5 чел. | 180h | м3 | 61.5 |
| 20 | 2.4.4 | 2.4.4 Опора №4 | 12d | 2002-04-26 | 2002-05-17 | 19 |  |  |  | 244.4d | 0d |  | 5 чел. | 120h | м3 | 9.95 |
| 21 | 3 | **III. Пролетные строения** | 247d | 2002-04-26 | 2003-07-02 |  | 2000-05-08 | 2000-07-10 | 36.8d | 0.4d |  |  |  | 3050h | - |  |
| 22 | 3.1 | 3.1. Отсыпка сборочной площадки | 20d | 2002-04-26 | 2002-05-31 | 19 | 2000-05-31 | 2000-06-15 | 9.6d | 0.4d | 0d | start no earlier than 1998-01-05 | 5 чел. | 200h | м3 | 150 |
| 23 | 3.2 | 3.2. Отсыпка сборочной площадки | 5d | 2002-05-17 | 2002-05-27 | 20 |  |  |  | 244.4d |  |  | 5 чел. | 50h | м3 | 95 |
| 24 | 3.3 | 3.3. Монтаж временных опор | 20d | 2002-05-31 | 2002-07-05 | 22 |  |  |  | 221.4d |  |  | 4 человека | 200h | шт | 4 |
| 25 | 3.4 | 3.4. Сборка и надвижка пролетных строений | 150d | 2002-05-03 | 2003-01-21 | 22SS+4d | 1998-04-20 | 1998-04-24 | 4d | 0.4d | 0d | start no earlier than 1999-01-11 | 5 человека 15 человек | 1500h | п.м | 126 |
| 26 | 3.5 | 3.5. Бетонирование шкафных стенок | 5d | 2003-01-21 | 2003-01-29 | 25 |  |  |  | 0.4d | 0d |  |  |  | шт | 51.2 |
| 27 | 3.6 | 3.6. Бетонирование плиты проезда | 57d | 2003-01-30 | 2003-05-09 | 26 | 1999-10-04 | 1999-10-19 | 9.6d | 0.4d | 0d |  | 10 человек | 570h | м3 | 380.9 |
| 28 | 3.7 | 3.7. Устройство мостового полотна | 27d | 2003-05-02 | 2003-06-18 | 27FS-4d | 2000-06-02 | 2000-06-08 | 4d | 0.4d | 0d |  | 10 чел. | 270h | м2 | 1650 |
| 29 | 3.8 | 3.8. Установка перильного и барьерного ограждения | 8d | 2003-06-19 | 2003-07-02 | 28 | 2000-05-05 | 2000-05-19 | 8.8d | 0.4d | 0d |  | 5 чел. | 80h | т | 19.7 |
| 30 | 3.9 | 3.9. Устройство лестничных сходов | 8d | 2003-05-15 | 2003-05-28 | 31FS+3d | 2000-05-18 | 2000-05-23 | 3.2d | 34.4d |  |  | 5 чел. | 80h | шт | 2 |
| 31 | 3.10 | 3.10. Устройство сопряжений | 10d | 2003-04-22 | 2003-05-09 | 34FS+3d |  |  |  | 34.4d | 0d |  | 6 чел. | 100h |  | 2 |

| ID | WBS | Task | Duration | Start | Finish | Predecessors | Baseline start | Baseline finish | Baseline duration | Total slack | Free slack | Constraint | Resources | Work | Текст1 | Число1 |
| --- | --- | --- | --- | --- | --- | --- | --- | --- | --- | --- | --- | --- | --- | --- | --- | --- |
| 32 | 4 | **IV. Регуляция и прочие работы** | 44d | 2003-01-30 | 2003-04-16 |  | 2000-05-25 | 2000-05-31 | 4d | 34.4d |  |  |  | 210h | - |  |
| 33 | 4.1 | 4.1.Досыпка и уплотнение конусов | 6d | 2003-01-30 | 2003-02-10 | 26 | 2000-05-18 | 2000-05-22 | 2.4d | 34.4d | 0d |  | 5 чел. | 60h | м3 | 2650 |
| 34 | 4.2 | 4.2. Укрепление конусов | 15d | 2003-03-21 | 2003-04-16 | 33FS+23d | 2000-05-23 | 2000-05-23 | 0.8d | 34.4d | 0d |  | 5 чел. | 150h | м3 | 101 |
| 35 | 5 | V.Неучтенные работы | 396.8d | 2001-09-03 | 2003-07-28 | 3SS | 1998-05-04 | 1998-05-11 | 4.8d | 0d |  | start no earlier than 2001-09-03 | 4 человека | 3968h | - |  |
| 36 | 6 | VI. Ликвидация строительства | 14d | 2003-07-03 | 2003-07-28 | 29 | 1998-04-20 | 1998-04-24 | 4d | 0.4d |  |  | 10 чел. | 140h | - |  |
